# 260226-Synthesizerproject-Ganttchart-V1

Schedule from MS Project, 2026-02-16 to 2026-04-17.

## Calendars

- Standard: Mon-Fri 08:00-12:00, 13:00-17:00; Sat-Sun off.

## Schedule

| ID | WBS | Task | Type | Duration | Start | Finish | Predecessors | Total slack | Free slack |
| --- | --- | --- | --- | --- | --- | --- | --- | --- | --- |
| 1 | 1 | **Monophonic Analogue Synthesiser** |  | 45d | 2026-02-16 | 2026-04-17 |  | 0d |  |
| 2 | 1.1 | **WP1: Project Management & Documentation** |  | 13d | 2026-02-16 | 2026-03-04 |  | 0d |  |
| 3 | 1.1.1 | 1.1 Define aims, scope, objectives |  | 3d | 2026-02-16 | 2026-02-18 |  | 0d |  |
| 4 | 1.1.2 | 1.2 Define work packages, deliverables, milestones |  | 2d | 2026-02-19 | 2026-02-20 | 3 | 0d |  |
| 5 | 1.1.3 | 1.4 Develop Quality Management System (QMS) |  | 4d | 2026-02-23 | 2026-02-26 | 4 | 33d | 1d |
| 6 | 1.1.4 | 1.5 Develop risk assessment |  | 3d | 2026-02-23 | 2026-02-25 | 4 | 34d | 2d |
| 7 | 1.1.5 | 1.6 Conduct feasibility study |  | 5d | 2026-02-23 | 2026-02-27 | 4 | 32d | 0d |
| 8 | 1.1.6 | 1.7 Finalise PM documentation pack |  | 3d | 2026-03-02 | 2026-03-04 | 5, 6, 7 | 32d | 0d |
| 9 | 1.1.7 | M1: PM documentation complete (target 10 Mar) | milestone | 0d | 2026-03-04 | 2026-03-04 | 8 | 32d |  |
| 10 | 1.2 | **WP2: System Architecture & Specification** |  | 13d | 2026-02-23 | 2026-03-11 |  | 0d |  |
| 11 | 1.2.1 | 2.1 System block diagram & signal flow |  | 3d | 2026-02-23 | 2026-02-25 | 4 | 0d |  |
| 12 | 1.2.2 | 2.2 Define voltage ranges (control & audio) |  | 2d | 2026-02-26 | 2026-02-27 | 11 | 0d |  |
| 13 | 1.2.3 | 2.3 Select circuit topologies (VCO/VCF/VCA/ADSR) |  | 5d | 2026-03-02 | 2026-03-06 | 12 | 0d |  |
| 14 | 1.2.4 | 2.4 Finalise schematics for prototyping |  | 3d | 2026-03-09 | 2026-03-11 | 13 | 0d |  |
| 15 | 1.2.5 | M2: System specification finalised | milestone | 0d | 2026-03-11 | 2026-03-11 | 14 | 0d |  |
| 16 | 1.3 | **WP3: Circuit Simulation & Verification** |  | 11d | 2026-03-12 | 2026-03-26 |  | 0d |  |
| 17 | 1.3.1 | 3.1 VCO simulation – triangle/square, 3 octaves, buffered |  | 5d | 2026-03-12 | 2026-03-18 | 15 | 0d |  |
| 18 | 1.3.2 | 3.2 VCF simulation |  | 5d | 2026-03-12 | 2026-03-18 | 15 | 0d |  |
| 19 | 1.3.3 | 3.3 VCA simulation |  | 5d | 2026-03-12 | 2026-03-18 | 15 | 0d |  |
| 20 | 1.3.4 | 3.4 ADSR simulation |  | 5d | 2026-03-12 | 2026-03-18 | 15 | 0d |  |
| 21 | 1.3.5 | M3: Component simulations complete (target 20 Mar) | milestone | 0d | 2026-03-18 | 2026-03-18 | 17, 18, 19, 20 | 0d |  |
| 22 | 1.3.6 | 3.5 ADSR validation – drives VCF & VCA without distortion |  | 2d | 2026-03-19 | 2026-03-20 | 21 | 0d |  |
| 23 | 1.3.7 | M4: ADSR validated (target 22 Mar) | milestone | 0d | 2026-03-20 | 2026-03-20 | 22 | 0d |  |
| 24 | 1.3.8 | 3.6 Compare results vs target specifications |  | 2d | 2026-03-23 | 2026-03-24 | 23 | 0d |  |
| 25 | 1.3.9 | 3.7 Refine designs based on simulation findings |  | 2d | 2026-03-25 | 2026-03-26 | 24 | 0d |  |
| 26 | 1.3.10 | 3.8 Document simulation outputs |  | 2d | 2026-03-25 | 2026-03-26 | 24 | 0d |  |
| 27 | 1.3.11 | M5: Simulations validated and documented | milestone | 0d | 2026-03-26 | 2026-03-26 | 25, 26 | 0d |  |
| 28 | 1.4 | B1: Simulation contingency buffer |  | 2d | 2026-03-27 | 2026-03-30 | 27 | 0d |  |

Notes:
- 1: Project summary
- 2: Summary
- 3: Initial scoping
- 5: Parallel
- 6: Feeds Risk Mgmt skill
- 7: Longest WP1 task
- 8: Integrate all WP1 outputs
- 9: Milestone
- 10: Summary
- 11: Starts in parallel with WP1 tail
- 15: Milestone
- 16: Summary
- 17: SMART target 20 Mar
- 18: Parallel
- 19: Parallel
- 20: Parallel
- 21: Milestone
- 22: SMART target 22 Mar
- 23: Milestone
- 26: Parallel with 3.7
- 27: Milestone
- 28: Absorbs convergence/iteration delays

| ID | WBS | Task | Type | Duration | Start | Finish | Predecessors | Total slack |
| --- | --- | --- | --- | --- | --- | --- | --- | --- |
| 29 | 1.5 | **WP4: Integration & PCB Design** |  | 8d | 2026-03-31 | 2026-04-09 |  | 0d |
| 30 | 1.5.1 | 4.1 Integrate full simulated signal chain |  | 3d | 2026-03-31 | 2026-04-02 | 28 | 0d |
| 31 | 1.5.2 | M6: Integration complete (target 1 Apr) | milestone | 0d | 2026-04-02 | 2026-04-02 | 30 | 0d |
| 32 | 1.5.3 | 4.2 Transfer schematics to OrCAD, assign footprints |  | 1d | 2026-04-03 | 2026-04-03 | 31 | 0d |
| 33 | 1.5.4 | 4.3 Design PCB layout (analogue best practice) |  | 2d | 2026-04-06 | 2026-04-07 | 32 | 0d |
| 34 | 1.5.5 | 4.4 DRC and peer review |  | 1d | 2026-04-08 | 2026-04-08 | 33 | 0d |
| 35 | 1.5.6 | M7: PCB design complete (DRC passed) (target 5 Apr) | milestone | 0d | 2026-04-08 | 2026-04-08 | 34 | 0d |
| 36 | 1.5.7 | 4.5 Generate Gerber files |  | 1d | 2026-04-09 | 2026-04-09 | 35 | 0d |
| 37 | 1.6 | B2: PCB design contingency buffer |  | 1d | 2026-04-10 | 2026-04-10 | 36 | 0d |
| 38 | 1.7 | **WP5: Final Validation & Report** |  | 16d | 2026-03-27 | 2026-04-17 |  | 0d |
| 39 | 1.7.1 | 5.1 Annotated waveforms for all modules |  | 1d | 2026-03-27 | 2026-03-27 | 26 | 10d |
| 40 | 1.7.2 | 5.2 Comparison: simulation vs target specification |  | 1d | 2026-03-27 | 2026-03-27 | 26 | 10d |
| 41 | 1.7.3 | 5.3 System-level behaviour analysis |  | 2d | 2026-04-03 | 2026-04-06 | 30 | 4d |
| 42 | 1.7.4 | 5.4 Document PCB design decisions & justification |  | 1d | 2026-04-09 | 2026-04-09 | 35 | 1d |
| 43 | 1.7.5 | 5.5 Compile technical report |  | 3d | 2026-04-13 | 2026-04-15 | 39, 40, 41, 42, 37 | 0d |
| 44 | 1.7.6 | 5.6 Final review and formatting |  | 2d | 2026-04-16 | 2026-04-17 | 43 | 0d |
| 45 | 1.7.7 | M8: Final report submission ready | milestone | 0d | 2026-04-17 | 2026-04-17 | 44 | 0d |

Notes:
- 29: Summary (no fabrication)
- 30: All modules linked in LTspice
- 31: Milestone
- 33: Split across team by module
- 34: Zero critical errors
- 35: Milestone
- 36: Manufacture-ready output
- 37: Absorbs DRC re-spin
- 38: Summary
- 39: Parallel with later WP4 work
- 40: Parallel
- 41: After integration
- 43: After all evidence collected
- 45: Project end
